# 8 - Deployment Guidance - Project Milestones

Schedule from MS Project, 2014-11-03 to 2014-12-09.

## Calendars

- Standard: Mon-Fri 08:00-12:00, 13:00-17:00; Sat-Sun off.

## Resources

| Resource | Group |
| --- | --- |
| Project Sponsor | Customer |
| IT Consultant | Partner |
| Engagement Manager | Partner |
| Microsoft Partner Technical Consultant | MS |
| Developer Consultant | Partner |
| Project Manager | Customer |
| Infrastructure Lead | Customer |
| DBA Consultant | Partner |
| DBA Lead | Customer |
| Application Owner | Customer |

## Schedule

| ID | WBS | Task | Type | Duration | Start | Finish | Predecessors | Total slack | Constraint | Resources | Work |
| --- | --- | --- | --- | --- | --- | --- | --- | --- | --- | --- | --- |
| 1 | 1 | **App Server Pre-Sales Engagement** |  | 11.2d? | 2014-11-03 08:00 | 2014-11-18 09:36 |  | 0d |  |  | 166.4h |
| 2 | 1.1 | **Governance** |  | 11.2d? | 2014-11-03 08:00 | 2014-11-18 09:36 |  | 0d |  |  | 166.4h |
| 3 | 1.1.1 | Engagement management |  | 5d | 2014-11-03 08:00 | 2014-11-07 17:00 |  | 0d |  | Engagement Manager [10%] | 4h |
| 4 | 1.1.2 | **Envision** |  | 1.2d | 2014-11-10 08:00 | 2014-11-11 09:36 |  | 0d |  |  | 26.4h |
| 5 | 1.1.2.1 | Pre-Engagement preparation |  | 0.5d | 2014-11-10 08:00 | 2014-11-10 12:00 | 3 | 0d |  | IT Consultant; Project Manager | 8h |
| 6 | 1.1.2.2 | Engagement kickoff |  | 0.1d | 2014-11-10 13:00 | 2014-11-10 13:48 | 5 | 0d |  | Developer Consultant; Engagement Manager; Infrastructure Lead; IT Consultant; Microsoft Partner Technical Consultant; Project Manager; Project Sponsor | 5.6h |
| 7 | 1.1.2.3 | Solution Value Proposition |  | 0.2d | 2014-11-10 13:48 | 2014-11-10 15:24 | 6 | 0d |  | Engagement Manager; Project Sponsor; Application Owner | 4.8h |
| 8 | 1.1.2.4 | Microsoft Partner Technical Consultant Check-in | milestone | 0d | 2014-11-10 15:24 | 2014-11-10 15:24 | 7 | 0d |  | Application Owner; Infrastructure Lead; Microsoft Partner Technical Consultant |  |
| 9 | 1.1.2.5 | Cost Planning |  | 0.2d | 2014-11-10 15:24 | 2014-11-10 17:00 | 8 | 0d |  | Developer Consultant; Engagement Manager | 3.2h |
| 10 | 1.1.2.6 | Application Migration Technical Assessment |  | 0.2d | 2014-11-11 08:00 | 2014-11-11 09:36 | 9 | 0d |  | Developer Consultant; Infrastructure Lead; Application Owner | 4.8h |
| 11 | 1.1.3 | **Plan** |  | 5d? | 2014-11-11 09:36 | 2014-11-18 09:36 | 4 | 0d |  |  | 136h |
| 12 | 1.1.3.1 | Microsoft Partner Technical Consultant Check-in | milestone | 0d | 2014-11-11 09:36 | 2014-11-11 09:36 |  | 0d | start no earlier than 2014-01-09 08:00 | IT Consultant; Microsoft Partner Technical Consultant; Application Owner; Developer Consultant |  |
| 13 | 1.1.3.2 | Architecture |  | 0.5d | 2014-11-11 09:36 | 2014-11-11 14:36 | 12 | 0d |  | Developer Consultant; Infrastructure Lead; Application Owner | 12h |
| 14 | 1.1.3.3 | **Proof of Concept** |  | 4d? | 2014-11-11 14:36 | 2014-11-17 14:36 |  | 0d |  |  | 112h |
| 15 | 1.1.3.3.1 | Configure Microsoft Azure |  | 0.5d | 2014-11-11 14:36 | 2014-11-12 09:36 | 13 | 0d |  | IT Consultant; Developer Consultant; Infrastructure Lead | 12h |
| 16 | 1.1.3.3.2 | Configure Domain Controller |  | 0.5d | 2014-11-12 09:36 | 2014-11-12 14:36 | 15 | 0d |  | IT Consultant; Developer Consultant; Infrastructure Lead | 12h |
| 17 | 1.1.3.3.3 | Configure Web server |  | 0.5d | 2014-11-12 14:36 | 2014-11-13 09:36 | 16 | 0d |  | IT Consultant; Developer Consultant; Infrastructure Lead | 12h |
| 18 | 1.1.3.3.4 | Configure SQL Server Infrastructure |  | 0.5d | 2014-11-13 09:36 | 2014-11-13 14:36 | 17 | 0d |  | IT Consultant; Infrastructure Lead; DBA Lead; DBA Consultant | 16h |
| 19 | 1.1.3.3.5 | Confiure SQL Server Always On |  | 1d? | 2014-11-13 14:36 | 2014-11-14 14:36 | 18 | 0d |  | IT Consultant; Infrastructure Lead; DBA Lead; DBA Consultant | 32h |
| 20 | 1.1.3.3.6 | Configure Deployment Strategy |  | 0.5d | 2014-11-14 14:36 | 2014-11-17 09:36 | 19, 16 | 0d |  | IT Consultant; Developer Consultant; Infrastructure Lead; Application Owner | 16h |
| 21 | 1.1.3.3.7 | Set Up Auto Scaling |  | 0.5d | 2014-11-17 09:36 | 2014-11-17 14:36 | 20 | 0d |  | Developer Consultant; Infrastructure Lead; Application Owner | 12h |
| 22 | 1.1.3.4 | Func spec dev |  | 0.5d | 2014-11-17 14:36 | 2014-11-18 09:36 | 21 | 0d | start no earlier than 2014-01-09 08:00 | IT Consultant; Developer Consultant; Infrastructure Lead | 12h |
| 23 | 1.1.3.5 | Design complete | milestone | 0d | 2014-11-11 09:36 | 2014-11-11 09:36 |  | 5d | start no earlier than 2014-01-10 08:00 |  |  |
| 24 | 2 | **App Server Deployment Engagement** |  | 15d | 2014-11-18 09:36 | 2014-12-09 09:36 | 1 | 0d |  |  | 364.4h |
| 25 | 2.1 | **Governance** |  | 15d | 2014-11-18 09:36 | 2014-12-09 09:36 |  | 0d |  |  | 12h |
| 26 | 2.1.1 | Engagement management |  | 15d | 2014-11-18 09:36 | 2014-12-09 09:36 |  | 0d |  | Engagement Manager [10%] | 12h |

| ID | WBS | Task | Type | Duration | Start | Finish | Predecessors | Total slack | Free slack | Resources | Work |
| --- | --- | --- | --- | --- | --- | --- | --- | --- | --- | --- | --- |
| 27 | 2.2 | **Envision** |  | 1d | 2014-11-18 09:36 | 2014-11-19 09:36 |  | 1.8d | 0d |  | 8h |
| 28 | 2.2.1 | Pre-project preparation |  | 0.5d | 2014-11-18 09:36 | 2014-11-18 14:36 |  | 1.8d | 0d | IT Consultant | 4h |
| 29 | 2.2.2 | Project kickoff |  | 0.5d | 2014-11-18 14:36 | 2014-11-19 09:36 | 28 | 1.8d |  | IT Consultant | 4h |
| 30 | 2.2.3 | Microsoft Partner Technical Consultant Check-in | milestone | 0d | 2014-11-18 09:36 | 2014-11-18 09:36 |  | 2.8d |  | IT Consultant; Microsoft Partner Technical Consultant |  |
| 31 | 2.3 | **Plan** |  | 4.2d | 2014-11-19 09:36 | 2014-11-25 11:12 | 27 | 1.8d | 0d |  | 146.4h |
| 32 | 2.3.1 | **Infrastructure design workshop** |  | 3.2d | 2014-11-19 09:36 | 2014-11-24 11:12 |  | 1.8d | 0d |  | 114.4h |
| 33 | 2.3.1.1 | Microsoft Azure IaaS Configuration |  | 0.5d | 2014-11-19 09:36 | 2014-11-19 14:36 |  | 1.8d | 0d | IT Consultant; Developer Consultant; Infrastructure Lead; Project Manager | 16h |
| 34 | 2.3.1.2 | Active Directory Configuration (if needed) |  | 0.5d | 2014-11-19 14:36 | 2014-11-20 09:36 | 33 | 1.8d | 0d | IT Consultant; Developer Consultant; Infrastructure Lead; Project Manager | 16h |
| 35 | 2.3.1.3 | Web Server Configuration |  | 0.5d | 2014-11-20 09:36 | 2014-11-20 14:36 | 34 | 1.8d | 0d | IT Consultant; Developer Consultant; Infrastructure Lead; Project Manager | 16h |
| 36 | 2.3.1.4 | SQL Server Configuration |  | 0.5d | 2014-11-20 14:36 | 2014-11-21 09:36 | 35 | 1.8d | 0d | DBA Lead; Developer Consultant; Infrastructure Lead; DBA Consultant | 16h |
| 37 | 2.3.1.5 | Deployment Strategy |  | 0.5d | 2014-11-21 09:36 | 2014-11-21 14:36 | 36 | 1.8d | 0d | IT Consultant; Developer Consultant; Infrastructure Lead; Project Manager; Application Owner | 20h |
| 38 | 2.3.1.6 | Web Server and Database HA Strategy |  | 0.5d | 2014-11-21 14:36 | 2014-11-24 09:36 | 37 | 1.8d | 0d | DBA Consultant; DBA Lead; Developer Consultant; Infrastructure Lead; IT Consultant; Application Owner | 24h |
| 39 | 2.3.1.7 | Auto Scaling Strategy |  | 0.2d | 2014-11-24 09:36 | 2014-11-24 11:12 | 38 | 1.8d |  | Developer Consultant; Infrastructure Lead; IT Consultant; Application Owner | 6.4h |
| 40 | 2.3.2 | Func spec dev |  | 1d | 2014-11-24 11:12 | 2014-11-25 11:12 | 32 | 1.8d |  | IT Consultant; Developer Consultant; Infrastructure Lead; Project Manager | 32h |
| 41 | 2.3.3 | Microsoft Partner Technical Consultant Check-in | milestone | 0d | 2014-11-19 09:36 | 2014-11-19 09:36 |  | 6d |  | IT Consultant; Microsoft Partner Technical Consultant; Application Owner; Developer Consultant |  |
| 42 | 2.3.4 | Design complete | milestone | 0d | 2014-11-19 09:36 | 2014-11-19 09:36 |  | 6d |  |  |  |
| 43 | 2.4 | **Build** |  | 4d | 2014-11-25 11:12 | 2014-12-01 11:12 | 31, 11 | 1.8d | 0d |  | 94h |
| 44 | 2.4.1 | **infrastructure build** |  | 4d | 2014-11-25 11:12 | 2014-12-01 11:12 |  | 1.8d | 0d |  | 94h |
| 45 | 2.4.1.1 | Configure Microsoft Azure IaaS |  | 0.5d | 2014-11-25 11:12 | 2014-11-25 16:12 |  | 1.8d | 0d | IT Consultant; Infrastructure Lead | 8h |
| 46 | 2.4.1.2 | Configure Active Directory (if needed) |  | 1d | 2014-11-25 16:12 | 2014-11-26 16:12 | 45 | 1.8d | 0d | IT Consultant; Infrastructure Lead | 16h |
| 47 | 2.4.1.3 | Configure Web Server |  | 0.5d | 2014-11-26 16:12 | 2014-11-27 11:12 | 46 | 1.8d | 0d | Developer Consultant; Infrastructure Lead; IT Consultant | 12h |
| 48 | 2.4.1.4 | Configure SQL Server Infrastructure |  | 1d | 2014-11-27 11:12 | 2014-11-28 11:12 | 47 | 1.8d | 0d | IT Consultant; DBA Lead; DBA Consultant | 24h |
| 49 | 2.4.1.5 | Configure Web Server and Database HA |  | 0.5d | 2014-11-28 11:12 | 2014-11-28 16:12 | 48 | 1.8d | 0d | DBA Consultant; DBA Lead; Infrastructure Lead; IT Consultant; Application Owner | 20h |
| 50 | 2.4.1.6 | Configure Auto Scaling |  | 0.25d | 2014-11-28 16:12 | 2014-12-01 09:12 | 49 | 1.8d | 0d | Developer Consultant; Infrastructure Lead; Application Owner | 6h |
| 51 | 2.4.1.7 | Set Up Deployment Tools |  | 0.25d | 2014-12-01 09:12 | 2014-12-01 11:12 | 50 | 1.8d |  | Developer Consultant; Infrastructure Lead; IT Consultant; Application Owner | 8h |
| 52 | 2.4.2 | Microsoft Partner Technical Consultant Check-in | milestone | 0d | 2014-11-28 11:12 | 2014-11-28 11:12 | 48 | 2.8d |  | IT Consultant; Microsoft Partner Technical Consultant; Application Owner; Developer Consultant |  |
| 53 | 2.4.3 | Solution built | milestone | 0d | 2014-12-01 11:12 | 2014-12-01 11:12 | 44 | 1.8d |  |  |  |

| ID | WBS | Task | Type | Duration | Start | Finish | Predecessors | Total slack | Free slack | Resources | Work |
| --- | --- | --- | --- | --- | --- | --- | --- | --- | --- | --- | --- |
| 54 | 2.5 | **Stabilize** |  | 1d | 2014-12-01 11:12 | 2014-12-02 11:12 | 43 | 1.8d | 0d |  | 16h |
| 55 | 2.5.1 | Connectivity validation |  | 0.5d | 2014-12-01 11:12 | 2014-12-01 16:12 |  | 1.8d | 0d | IT Consultant | 4h |
| 56 | 2.5.2 | Test Application |  | 0.5d | 2014-12-01 16:12 | 2014-12-02 11:12 | 55 | 1.8d |  | IT Consultant; Developer Consultant; Application Owner | 12h |
| 57 | 2.5.3 | Solution validated | milestone | 0d | 2014-12-01 11:12 | 2014-12-01 11:12 |  | 2.8d |  |  |  |
| 58 | 2.6 | **Deploy** |  | 3d | 2014-12-02 11:12 | 2014-12-05 11:12 | 54 | 1.8d |  |  | 88h |
| 59 | 2.6.1 | **Hand off to dev ops** |  | 2.5d | 2014-12-02 11:12 | 2014-12-04 16:12 |  | 1.8d | 0d |  | 60h |
| 60 | 2.6.1.1 | Solution walk through with app server ops teams |  | 0.5d | 2014-12-02 11:12 | 2014-12-02 16:12 |  | 1.8d | 0d | IT Consultant; Application Owner; Developer Consultant | 12h |
| 61 | 2.6.1.2 | Go live support |  | 2d | 2014-12-02 16:12 | 2014-12-04 16:12 | 60 | 1.8d |  | IT Consultant; Application Owner; Developer Consultant | 48h |
| 62 | 2.6.2 | Project close out meeting |  | 0.5d | 2014-12-04 16:12 | 2014-12-05 11:12 | 59 | 1.8d | 0d | IT Consultant; Developer Consultant; Engagement Manager; Infrastructure Lead; Microsoft Partner Technical Consultant; Project Manager; Project Sponsor | 28h |
| 63 | 2.6.3 | Solution deployed | milestone | 0d | 2014-12-05 11:12 | 2014-12-05 11:12 | 62 | 1.8d |  |  |  |
