# Modern Datacenter - Work Breakdown Structure_MXP-OFF_1

Schedule from MS Project, 2012-11-05 to 2013-01-02.

## Calendars

- Standard: Mon-Fri 08:00-12:00, 13:00-17:00; Sat-Sun off. Exceptions (off unless hours are given): 2012-11-19 to 2012-11-23 (Thanksgiving), 2012-12-24 to 2012-12-31 (Christmas).

## Resources

| Resource | Group |
| --- | --- |
| Architect | Project Governance |
| Senior Consultant (On-Premises) | Solution Delivery |
| Associate Consultant | Solution Delivery |
| Engagement Manager | Project Governance |
| Project Manager | Project Governance |
| Consultant | Solution Delivery |
| Principal Consultant | Solution Delivery |
| Senior Consultant (Azure) | Solution Delivery |
| Application Owner |  |
| Infrastructure Lead |  |
| Microsoft Partner Technical Consultant |  |

## Schedule

| ID | WBS | Task | Type | Duration | Start | Finish | Predecessors | Total slack | Free slack | Resources | Work |
| --- | --- | --- | --- | --- | --- | --- | --- | --- | --- | --- | --- |
| 1 | 1 | ReadMe First - Open this task and read the Notes tab for details on how to use this project plan | milestone | 0d | 2012-11-05 | 2012-11-05 |  | 31.5d |  |  |  |
| 2 | 2 | **Azure Site Recovery Pre-Sales Engagement** |  | 16d | 2012-11-05 | 2012-12-03 |  | 15.5d |  |  | 179.2h |
| 3 | 2.1 | **Governance** |  | 16d | 2012-11-05 | 2012-12-03 |  | 15.5d |  |  | 51.2h |
| 4 | 2.1.1 | Engagement Management |  | 16d | 2012-11-05 | 2012-12-03 |  | 15.5d |  | Engagement Manager [20%] | 25.6h |
| 5 | 2.1.2 | Architect Oversight |  | 16d | 2012-11-05 | 2012-12-03 |  | 15.5d |  | Architect [20%] | 25.6h |
| 6 | 2.2 | **Solution Delivery** |  | 16d | 2012-11-05 | 2012-12-03 |  | 15.5d |  |  | 128h |
| 7 | 2.2.1 | **Envision** |  | 1d | 2012-11-05 | 2012-11-05 |  | 15.5d |  |  | 8h |
| 8 | 2.2.1.1 | Microsoft Partner Technical Consultant Check-in | milestone | 0d | 2012-11-05 | 2012-11-05 |  | 31.5d |  | Application Owner; Infrastructure Lead; Microsoft Partner Technical Consultant |  |
| 9 | 2.2.1.2 | Kickoff and Envisioning |  | 0.5d | 2012-11-05 | 2012-11-05 |  | 15.5d | 0d | Senior Consultant (Azure) | 4h |
| 10 | 2.2.1.3 | Document Vision/Scope |  | 0.5d | 2012-11-05 | 2012-11-05 | 9 | 15.5d | 0d | Senior Consultant (Azure) | 4h |
| 11 | 2.2.1.4 | Phase Document/Objectives Due | milestone | 0d | 2012-11-05 | 2012-11-05 |  | 31.5d |  | Engagement Manager |  |
| 12 | 2.2.2 | **Plan** |  | 8d | 2012-11-05 | 2012-11-14 |  | 16.5d |  |  | 56h |
| 13 | 2.2.2.1 | **Solution Alignment Workshop (SAW)** |  | 4d | 2012-11-05 | 2012-11-08 |  | 16.5d |  |  | 24h |
| 14 | 2.2.2.1.1 | High-Level Azure Subscription BC/DR Planning |  | 1d | 2012-11-06 | 2012-11-06 | 10 | 15.5d | 0d | Senior Consultant (Azure) | 8h |
| 15 | 2.2.2.1.2 | Azure Site Recovery Service (ASR) Workshop |  | 2d | 2012-11-07 | 2012-11-08 | 14 | 15.5d | 0d | Senior Consultant (Azure) | 16h |
| 16 | 2.2.2.1.3 | Microsoft Partner Technical Consultant Check-in | milestone | 0d | 2012-11-05 | 2012-11-05 |  | 31.5d |  | Application Owner; Infrastructure Lead; Microsoft Partner Technical Consultant |  |
| 17 | 2.2.2.2 | **Azure Site Recovery Service (ASR) Planning** |  | 3d | 2012-11-08 | 2012-11-13 |  | 15.5d |  |  | 24h |
| 18 | 2.2.2.2.1 | Identify Source/Target (E2E Hyper-V, E2E VMWare/Physical, E2A Hyper-V to Azure) | milestone | 0d | 2012-11-08 | 2012-11-08 | 15 | 15.5d | 0d | Senior Consultant (Azure) |  |
| 19 | 2.2.2.2.2 | Target workload identification |  | 1d | 2012-11-09 | 2012-11-09 | 18 | 15.5d | 0d | Senior Consultant (Azure) | 8h |
| 20 | 2.2.2.2.3 | Capacity Planning |  | 1d | 2012-11-12 | 2012-11-12 | 19 | 15.5d | 0d | Senior Consultant (Azure) | 8h |
| 21 | 2.2.2.2.4 | Test Specification planning |  | 1d | 2012-11-13 | 2012-11-13 | 20 | 15.5d | 0d | Senior Consultant (Azure) | 8h |
| 22 | 2.2.2.3 | **Protection and Recovery Plan Planning (limted to one per multi-tier application)** |  | 1d | 2012-11-14 | 2012-11-14 |  | 15.5d |  |  | 8h |
| 23 | 2.2.2.3.1 | Workload Recovery Group Identification |  | 0.25d | 2012-11-14 | 2012-11-14 | 21 | 15.5d | 0d | Senior Consultant (Azure) | 2h |
| 24 | 2.2.2.3.2 | Workload Recovery Automation Identification and Requirements |  | 0.25d | 2012-11-14 | 2012-11-14 | 23 | 15.5d | 0d | Senior Consultant (Azure) | 2h |
| 25 | 2.2.2.3.3 | Workload pre-requisite planning |  | 0.5d | 2012-11-14 | 2012-11-14 | 24 | 15.5d | 0d | Senior Consultant (Azure) | 4h |
| 26 | 2.2.2.4 | Phase Document/Objectives Due | milestone | 0d | 2012-11-14 | 2012-11-14 | 25 | 15.5d | 0d | Engagement Manager |  |

Notes:
- 1: 1. When opening this project plan please click on the Yes button to update links. / 2. Depending on the engagement tasks can be activated or inactivated as required. Right click on a task listed "(ACTIVATE TASKS AS REQUIRED)" to activate the task and associated subtasks. Note that all "optional" tasks are inactive by default. / 3. The Governance tasks are automatically calculated as 20% of the Work calculated in the Solution Delivery section. / 4. The 10 day Discovery and Rationalization tasks are considered OPTIONAL to support analysis of the customer application landscape with MAP / 5. The engagement is based on a "per-multi-tier application" model of 4 days across PLAN, BUILD and STABILIZE tasks. A "multi-tier application" is one or more VMs which comprise an application. When scaling above 10, the costs for STABILIZE can be normalized to a time boxed activity. The primary concern is to allow time for replication seeding when performing complex application BC/DR.
- 25: E2E Hyper-V to Hyper-V / E2E VMWare/Physical to VMWare / E2A Hyper-V to Azure / ·Azure workload/operating system/hardware profile compatibility/ ·Workload supportability

| ID | WBS | Task | Type | Duration | Start | Finish | Predecessors | Total slack | Free slack | Resources | Work |
| --- | --- | --- | --- | --- | --- | --- | --- | --- | --- | --- | --- |
| 27 | 2.2.3 | **Build (Proof of Concept)** |  | 6d | 2012-11-14 | 2012-11-29 |  | 15.5d |  |  | 48h |
| 28 | 2.2.3.1 | Validated Infrastructure | milestone | 0d | 2012-11-14 | 2012-11-14 | 26 | 15.5d | 0d | Senior Consultant (Azure) |  |
| 29 | 2.2.3.2 | **Configure ASR and Infrastructure** |  | 5d | 2012-11-15 | 2012-11-28 |  | 15.5d |  |  | 40h |
| 30 | 2.2.3.2.1 | Configure Microsoft Azure Site Recovery Service |  | 0.5d | 2012-11-15 | 2012-11-15 | 28 | 15.5d | 0d | Senior Consultant (Azure) | 4h |
| 31 | 2.2.3.2.2 | Verify Source/Target Health and Compatibility |  | 2d | 2012-11-15 | 2012-11-26 | 30 | 15.5d | 0d | Senior Consultant (Azure) | 16h |
| 32 | 2.2.3.2.3 | ASR Source and Target Preparation |  | 2.5d | 2012-11-26 | 2012-11-28 | 31 | 15.5d | 0d | Senior Consultant (Azure) | 20h |
| 33 | 2.2.3.3 | **Protection and Recovery Plan Development (limted to one multi-tier application)** |  | 1d | 2012-11-29 | 2012-11-29 |  | 15.5d |  |  | 8h |
| 34 | 2.2.3.3.1 | Workload Recovery Group Creation and Validation |  | 0.5d | 2012-11-29 | 2012-11-29 | 32 | 15.5d | 0d | Senior Consultant (Azure) | 4h |
| 35 | 2.2.3.3.2 | Workload Recovery Automation (script) Deployment and Validation |  | 0.5d | 2012-11-29 | 2012-11-29 | 34 | 15.5d | 0d | Senior Consultant (Azure) | 4h |
| 36 | 2.2.3.4 | Phase Document/Objectives Due | milestone | 0d | 2012-11-29 | 2012-11-29 | 35 | 15.5d | 0d | Engagement Manager |  |
| 37 | 2.2.4 | **Stabilize** |  | 2d | 2012-11-29 | 2012-12-03 |  | 15.5d |  |  | 16h |
| 38 | 2.2.4.1 | **Protection and Recovery Plan Testing (limted to one multi-tier application)** |  | 2d | 2012-11-29 | 2012-12-03 |  | 15.5d |  |  | 16h |
| 39 | 2.2.4.1.1 | Validated Replication (large datasets require time to replicate) | milestone | 0d | 2012-11-29 | 2012-11-29 | 36 | 15.5d | 0d | Senior Consultant (Azure) |  |
| 40 | 2.2.4.1.2 | Test and Validate DR Scenario through Test Failover (timeboxed) |  | 1d | 2012-11-30 | 2012-11-30 | 39 | 15.5d | 0d | Senior Consultant (Azure) | 8h |
| 41 | 2.2.4.1.3 | Test and Validate DR Scenario failover/failback through standard Failover (timeboxed) |  | 1d | 2012-12-03 | 2012-12-03 | 40 | 15.5d | 0d | Senior Consultant (Azure) | 8h |
| 42 | 2.2.4.2 | Phase Document/Objectives Due | milestone | 0d | 2012-12-03 | 2012-12-03 | 41 | 15.5d | 0d | Senior Consultant (Azure) |  |
| 43 | 2.2.5 | JumpStart Close-Out and Next Steps | milestone | 0d | 2012-12-03 | 2012-12-03 | 42 | 15.5d |  | Engagement Manager |  |
| 44 | 3 | **Azure Site Recovery Deployment Engagement** |  | 31.5d | 2012-11-05 | 2013-01-02 |  | 0d |  |  | 403.2h |
| 45 | 3.1 | **Governance** |  | 31.5d | 2012-11-05 | 2013-01-02 |  | 0d |  |  | 151.2h |
| 46 | 3.1.1 | Project Management |  | 31.5d | 2012-11-05 | 2013-01-02 |  | 0d |  | Project Manager [20%] | 50.4h |
| 47 | 3.1.2 | Engagement Management |  | 31.5d | 2012-11-05 | 2013-01-02 |  | 0d |  | Engagement Manager [20%] | 50.4h |
| 48 | 3.1.3 | Architect Oversight |  | 31.5d | 2012-11-05 | 2013-01-02 |  | 0d |  | Architect [20%] | 50.4h |
| 49 | 3.2 | **Solution Delivery** |  | 31.5d | 2012-11-05 | 2013-01-02 |  | 0d |  |  | 252h |
| 50 | 3.2.1 | **Envision** |  | 1d | 2012-11-05 | 2012-11-05 |  | 0d |  |  | 8h |
| 51 | 3.2.1.1 | Microsoft Partner Technical Consultant Check-in | milestone | 0d | 2012-11-05 | 2012-11-05 |  | 31.5d |  | Application Owner; Infrastructure Lead; Microsoft Partner Technical Consultant |  |
| 52 | 3.2.1.2 | Kickoff and Envisioning |  | 0.5d | 2012-11-05 | 2012-11-05 |  | 0d |  | Senior Consultant (Azure) | 4h |
| 53 | 3.2.1.3 | Document Vision/Scope |  | 0.5d | 2012-11-05 | 2012-11-05 | 52 | 0d |  | Senior Consultant (Azure) | 4h |
| 54 | 3.2.1.4 | Phase Document/Objectives Due | milestone | 0d | 2012-11-05 | 2012-11-05 |  | 31.5d |  | Engagement Manager |  |

Notes:
- 31: E2E Hyper-V to Hyper-V / ·Assessment of Hyper-V and System Center Environment / E2E VMWare/Physical to VMWare / ·Assessment of VMWare/Physical Environment / E2A Hyper-V to Azure / ·Assessment of Hyper-V and System Center Environment / ·Assessment of Microsoft Azure Subscription
- 32: E2E Hyper-V to Hyper-V / ·Network mapping / ·VMM Cloud configuration / ·VMM Library/Script repository planning / ·Network access (firewall, etc) / E2E VMWare/Physical to VMWare / ·vCenter access / ·Network access (firewall access, etc) / E2A Hyper-V to Azure / ·Network mapping / ·Network access (Azure VPN/ExpressRoute, outbound proxy, firewall, etc) / ·VMM Cloud and VM Networks on candidate VMs

| ID | WBS | Task | Type | Duration | Start | Finish | Predecessors | Total slack | Resources | Work |
| --- | --- | --- | --- | --- | --- | --- | --- | --- | --- | --- |
| 55 | 3.2.2 | **Plan** |  | 18d | 2012-11-05 | 2012-12-05 |  | 1d |  | 136h |
| 56 | 3.2.2.1 | **Solution Alignment Workshop (SAW)** |  | 4d | 2012-11-05 | 2012-11-08 |  | 1d |  | 24h |
| 57 | 3.2.2.1.1 | High-Level Azure Subscription BC/DR Planning |  | 1d | 2012-11-06 | 2012-11-06 | 53 | 0d | Senior Consultant (Azure) | 8h |
| 58 | 3.2.2.1.2 | Azure Site Recovery Service (ASR) Workshop |  | 2d | 2012-11-07 | 2012-11-08 | 57 | 0d | Senior Consultant (Azure) | 16h |
| 59 | 3.2.2.1.3 | Microsoft Partner Technical Consultant Check-in | milestone | 0d | 2012-11-05 | 2012-11-05 |  | 31.5d | Application Owner; Infrastructure Lead; Microsoft Partner Technical Consultant |  |
| 60 | 3.2.2.2 | **[Optional] Discovery and Rationalization (ACTIVATE TASKS BELOW IF REQUIRED)** |  | 10d | 2012-11-09 | 2012-11-29 |  | 0d |  | 80h |
| 61 | 3.2.2.2.1 | **Data Collection** |  | 5d | 2012-11-09 | 2012-11-15 |  | 0d |  | 40h |
| 62 | 3.2.2.2.1.1 | Install and Prepare Discovery Server |  | 1d | 2012-11-09 | 2012-11-09 | 58 | 0d | Senior Consultant (Azure) | 8h |
| 63 | 3.2.2.2.1.2 | Scan Servers to Collect Data |  | 4d | 2012-11-12 | 2012-11-15 | 62 | 0d | Senior Consultant (Azure) | 32h |
| 64 | 3.2.2.2.2 | **Create Catalog, Rationalize and Categorize by Type** |  | 5d | 2012-11-16 | 2012-11-29 |  | 0d |  | 40h |
| 65 | 3.2.2.2.2.1 | Rationalize and Categorize by Application Type |  | 2d | 2012-11-16 | 2012-11-26 | 63 | 0d | Senior Consultant (Azure) | 16h |
| 66 | 3.2.2.2.2.2 | Preliminary Server and Application Analysis |  | 3d | 2012-11-27 | 2012-11-29 | 65 | 0d | Senior Consultant (Azure) | 24h |
| 67 | 3.2.2.3 | **Azure Site Recovery Service (ASR) Planning** |  | 3d | 2012-11-29 | 2012-12-04 |  | 0d |  | 24h |
| 68 | 3.2.2.3.1 | Identify Source/Target (E2E Hyper-V, E2E VMWare/Physical, E2A Hyper-V to Azure) | milestone | 0d | 2012-11-29 | 2012-11-29 | 66 | 0d | Senior Consultant (Azure) |  |
| 69 | 3.2.2.3.2 | Target workload identification |  | 1d | 2012-11-30 | 2012-11-30 | 68 | 0d | Senior Consultant (Azure) | 8h |
| 70 | 3.2.2.3.3 | Capacity Planning |  | 1d | 2012-12-03 | 2012-12-03 | 69 | 0d | Senior Consultant (Azure) | 8h |
| 71 | 3.2.2.3.4 | Test Specification planning |  | 1d | 2012-12-04 | 2012-12-04 | 70 | 0d | Senior Consultant (Azure) | 8h |
| 72 | 3.2.2.4 | **Protection and Recovery Plan Planning (per multi-tier application)** |  | 1d | 2012-12-05 | 2012-12-05 |  | 0d |  | 8h |
| 73 | 3.2.2.4.1 | Workload Recovery Group Identification |  | 0.25d | 2012-12-05 | 2012-12-05 | 71 | 0d | Senior Consultant (Azure) | 2h |
| 74 | 3.2.2.4.2 | Workload Recovery Automation Identification and Requirements |  | 0.25d | 2012-12-05 | 2012-12-05 | 73 | 0d | Senior Consultant (Azure) | 2h |
| 75 | 3.2.2.4.3 | Workload pre-requisite planning |  | 0.5d | 2012-12-05 | 2012-12-05 | 74 | 0d | Senior Consultant (Azure) | 4h |
| 76 | 3.2.2.5 | Phase Document/Objectives Due | milestone | 0d | 2012-12-05 | 2012-12-05 | 75 | 0d | Engagement Manager |  |
| 77 | 3.2.3 | **Build** |  | 6d | 2012-12-05 | 2012-12-13 |  | 0d |  | 48h |
| 78 | 3.2.3.1 | Validated Infrastructure | milestone | 0d | 2012-12-05 | 2012-12-05 | 76 | 0d | Senior Consultant (Azure) |  |

Notes:
- 75: E2E Hyper-V to Hyper-V / E2E VMWare/Physical to VMWare / E2A Hyper-V to Azure / ·Azure workload/operating system/hardware profile compatibility/ ·Workload supportability

| ID | WBS | Task | Type | Duration | Start | Finish | Predecessors | Total slack | Resources | Work |
| --- | --- | --- | --- | --- | --- | --- | --- | --- | --- | --- |
| 79 | 3.2.3.2 | **Configure ASR and Infrastructure** |  | 5d | 2012-12-06 | 2012-12-12 |  | 0d |  | 40h |
| 80 | 3.2.3.2.1 | Configure Microsoft Azure Site Recovery Service |  | 0.5d | 2012-12-06 | 2012-12-06 | 78 | 0d | Senior Consultant (Azure) | 4h |
| 81 | 3.2.3.2.2 | Verify Source/Target Health and Compatibility |  | 2d | 2012-12-06 | 2012-12-10 | 80 | 0d | Senior Consultant (Azure) | 16h |
| 82 | 3.2.3.2.3 | ASR Source and Target Preparation |  | 2.5d | 2012-12-10 | 2012-12-12 | 81 | 0d | Senior Consultant (Azure) | 20h |
| 83 | 3.2.3.3 | **Protection and Recovery Plan Development (per multi-tier application)** |  | 1d | 2012-12-13 | 2012-12-13 |  | 0d |  | 8h |
| 84 | 3.2.3.3.1 | Workload Recovery Group Creation and Validation |  | 0.5d | 2012-12-13 | 2012-12-13 | 82 | 0d | Senior Consultant (Azure) | 4h |
| 85 | 3.2.3.3.2 | Workload Recovery Automation (script) Deployment and Validation |  | 0.5d | 2012-12-13 | 2012-12-13 | 84 | 0d | Senior Consultant (Azure) | 4h |
| 86 | 3.2.3.4 | Phase Document/Objectives Due | milestone | 0d | 2012-12-13 | 2012-12-13 | 85 | 0d | Engagement Manager |  |
| 87 | 3.2.4 | **Stabilize** |  | 2d | 2012-12-13 | 2012-12-17 |  | 0d |  | 16h |
| 88 | 3.2.4.1 | **Protection and Recovery Plan Testing (per multi-tier application)** |  | 2d | 2012-12-13 | 2012-12-17 |  | 0d |  | 16h |
| 89 | 3.2.4.1.1 | Validated Replication (large datasets require time to replicate) | milestone | 0d | 2012-12-13 | 2012-12-13 | 86 | 0d | Senior Consultant (Azure) |  |
| 90 | 3.2.4.1.2 | Test and Validate DR Scenario through Test Failover (timeboxed) |  | 1d | 2012-12-14 | 2012-12-14 | 89 | 0d | Senior Consultant (Azure) | 8h |
| 91 | 3.2.4.1.3 | Test and Validate DR Scenario failover/failback through standard Failover (timeboxed) |  | 1d | 2012-12-17 | 2012-12-17 | 90 | 0d | Senior Consultant (Azure) | 8h |
| 92 | 3.2.4.2 | Phase Document/Objectives Due | milestone | 0d | 2012-12-17 | 2012-12-17 | 91 | 0d | Senior Consultant (Azure) |  |
| 93 | 3.2.5 | **Deploy** |  | 5.5d | 2012-12-18 | 2013-01-02 |  | 0d |  | 44h |
| 94 | 3.2.5.1 | Protection and Recovery Planned/Unplanned Validation (timeboxed) |  | 5d | 2012-12-18 | 2013-01-01 | 92 | 0d | Senior Consultant (Azure) | 40h |
| 95 | 3.2.5.2 | Close-out Meeting |  | 0.5d | 2013-01-02 | 2013-01-02 | 94 | 0d | Senior Consultant (Azure) | 4h |
| 96 | 3.2.5.3 | Phase Document/Objectives Due | milestone | 0d | 2013-01-02 | 2013-01-02 | 95 | 0d | Engagement Manager |  |

Notes:
- 81: E2E Hyper-V to Hyper-V / ·Assessment of Hyper-V and System Center Environment / E2E VMWare/Physical to VMWare / ·Assessment of VMWare/Physical Environment / E2A Hyper-V to Azure / ·Assessment of Hyper-V and System Center Environment / ·Assessment of Microsoft Azure Subscription
- 82: E2E Hyper-V to Hyper-V / ·Network mapping / ·VMM Cloud configuration / ·VMM Library/Script repository planning / ·Network access (firewall, etc) / E2E VMWare/Physical to VMWare / ·vCenter access / ·Network access (firewall access, etc) / E2A Hyper-V to Azure / ·Network mapping / ·Network access (Azure VPN/ExpressRoute, outbound proxy, firewall, etc) / ·VMM Cloud and VM Networks on candidate VMs
